# SIGER Ventanas

Schedule from MS Project, 2005-08-25 to 2005-12-30.
Codelco

## Calendars

- Estándar: Mon-Fri 08:00-14:00, 15:00-17:00; Sat-Sun off.

## Resources

| Resource |
| --- |
| Carlos López Riquelme |
| Claudio Olguín Castillo |
| Carlos Lorca Pastén |
| Mauricio Chávez Fuentes |
| TI-Ventanas |

## Schedule

| ID | WBS | Task | Duration | Start | Finish | Predecessors | Total slack | Free slack | Constraint | Resources | Work |
| --- | --- | --- | --- | --- | --- | --- | --- | --- | --- | --- | --- |
| 1 | 1 | **Instalación SIGER en Ventanas** | 92d | 2005-08-25 | 2005-12-30 |  | 0d |  |  | Carlos Lorca Pastén | 7992h |
| 2 | 1.1 | **Actividades Funcionales** | 59.75d | 2005-08-25 | 2005-11-16 |  | 32.25d |  |  | Carlos López Riquelme | 2890h |
| 3 | 1.1.1 | Coordinación con Líder Recursos Humanos | 1d | 2005-08-25 | 2005-08-25 |  | 91d |  | start no earlier than 2005-08-25 | Carlos López Riquelme | 8h |
| 4 | 1.1.2 | Ingreso de Carga de datos básicos | 13d | 2005-08-29 | 2005-09-14 |  | 77d |  | start no earlier than 2005-08-29 | Carlos López Riquelme | 104h |
| 5 | 1.1.3 | Identificación de Datos Maestros para Remuneraciones | 13d | 2005-08-29 | 2005-09-14 |  | 58d | 0d | start no earlier than 2005-08-29 | Claudio Olguín Castillo | 104h |
| 6 | 1.1.4 | Preparación cargas históricas SIGER | 1d | 2005-08-25 | 2005-08-25 |  | 91d |  | start no earlier than 2005-08-25 | Claudio Olguín Castillo | 8h |
| 7 | 1.1.5 | Definición y homologación de Claves de Haberes | 15d | 2005-08-25 | 2005-09-14 |  | 58d | 0d | start no earlier than 2005-08-25 | Claudio Olguín Castillo | 120h |
| 8 | 1.1.6 | Definición y homologación de Claves de Descuentos | 15d | 2005-08-25 | 2005-09-14 |  | 58d | 0d | start no earlier than 2005-08-25 | Claudio Olguín Castillo | 120h |
| 9 | 1.1.7 | Definición de Claves de Tiempo en SIGER | 15d | 2005-08-25 | 2005-09-14 |  | 58d | 0d | start no earlier than 2005-08-25 | Claudio Olguín Castillo | 120h |
| 10 | 1.1.8 | Capacitacion en Browser Q.B. | 15d | 2005-08-25 | 2005-09-14 |  | 77d |  | start no earlier than 2005-08-25 | Carlos López Riquelme | 120h |
| 11 | 1.1.9 | Definición de Usuarios | 1d | 2005-08-25 | 2005-08-25 |  | 91d |  | start no earlier than 2005-08-25 | Claudio Olguín Castillo | 8h |
| 12 | 1.1.10 | Definición de Perfiles | 1d | 2005-08-25 | 2005-08-25 |  | 91d |  | start no earlier than 2005-08-25 | Claudio Olguín Castillo | 8h |
| 13 | 1.1.11 | Capacitacion en SIGER | 15d | 2005-08-25 | 2005-09-14 |  | 77d |  | start no earlier than 2005-08-25 | Claudio Olguín Castillo | 120h |
| 14 | 1.1.12 | Construcción de Conceptos de Cálculos | 22d | 2005-09-16 | 2005-10-17 | 27 | 54d |  | start no earlier than 2005-09-05 | Claudio Olguín Castillo | 176h |
| 15 | 1.1.13 | **Pruebas de Conceptos de Cálculos** | 22d | 2005-09-16 | 2005-10-17 |  | 17.25d | 0d |  | Claudio Olguín Castillo | 1222h |
| 16 | 1.1.13.1 | 1.-Pagos Remuneraciones | 22d | 2005-09-16 | 2005-10-17 | 27 | 17.25d |  | start no earlier than 2005-09-05 | Claudio Olguín Castillo | 176h |
| 17 | 1.1.13.2 | 2.-Pagos Bonos | 21.75d | 2005-09-16 | 2005-10-17 |  | 17.5d |  | start no earlier than 2005-09-16 | Claudio Olguín Castillo | 174h |
| 18 | 1.1.13.3 | 3.-Pagos Ordenes de Pago Individuales | 21.75d | 2005-09-16 | 2005-10-17 |  | 17.5d |  | start no earlier than 2005-09-16 | Claudio Olguín Castillo | 174h |
| 19 | 1.1.13.4 | 4.-Pagos Ordenes de Pago Masivo | 21.75d | 2005-09-16 | 2005-10-17 |  | 17.5d |  | start no earlier than 2005-09-16 | Claudio Olguín Castillo | 174h |
| 20 | 1.1.13.5 | 5.-Cálculo Provisiones | 21.75d | 2005-09-16 | 2005-10-17 |  | 17.5d |  | start no earlier than 2005-09-16 | Claudio Olguín Castillo | 174h |
| 21 | 1.1.13.6 | 6.-Cálculo Licencias Médicas | 21.75d | 2005-09-16 | 2005-10-17 |  | 17.5d |  | start no earlier than 2005-09-16 | Claudio Olguín Castillo | 174h |
| 22 | 1.1.14 | Pruebas de Impresión Remuneraciones | 21.75d | 2005-10-18 | 2005-11-16 | 15 | 17.25d | 0d | start no earlier than 2005-09-16 | Claudio Olguín Castillo | 174h |
| 23 | 1.2 | **Actividades TI Infraestructura** | 37d | 2005-08-26 | 2005-10-17 |  | 4d |  |  | Mauricio Chávez Fuentes | 592h |
| 24 | 1.2.1 | Análisis de Requerimientos | 5d | 2005-08-26 | 2005-09-01 | 31 | 4d | 0d | finish no earlier than 2005-08-22 | Mauricio Chávez Fuentes | 40h |
| 25 | 1.2.2 | Instalación Plataforma de Desarrollo | 5d | 2005-09-02 | 2005-09-08 | 24 | 4d | 0d | finish no earlier than 2005-08-26 | Mauricio Chávez Fuentes | 40h |
| 26 | 1.2.3 | Configuración Plataforma de Desarrollo | 3d | 2005-09-09 | 2005-09-13 | 25 | 4d | 0d | finish no earlier than 2005-08-31 | Mauricio Chávez Fuentes | 24h |
| 27 | 1.2.4 | Habilitación Ambiente de Desarrollo | 2d | 2005-09-14 | 2005-09-15 | 26 | 4d | 0d | finish no earlier than 2005-09-01 | Mauricio Chávez Fuentes | 16h |
| 28 | 1.2.5 | Habilitación Ambiente de Producción | 22d | 2005-09-16 | 2005-10-17 | 27 | 4d | 0d | finish no earlier than 2005-09-30 | Mauricio Chávez Fuentes | 176h |

Notes:
- 3: Tarea: / Definir Responsables de TM / Entregable: / Nota Formal
- 4: Tarea: / Solicitar a TIC. HR Infotipos básicos / Entregable: / Carta Gantt
- 5: Tarea: / Levantamiento de Base de datos / Entregable: / Carta Gantt
- 6: Tarea: / Definir cargas obligatorias / Entregable: / Informe de carga
- 7: Tarea: / Homologación / Entregable: / Ingresar a Siger
- 8: Tarea: / Homologación / Entregable: / Ingresar a Siger
- 9: Tarea: / Homologación / Entregable: / Ingresar a Siger
- 10: Tarea: / Programa de Capacitación / Entregable: / Coordinación
- 11: Tarea: / Lista de Usuarios
- 12: Tarea: / Definir el administrador
- 13: Tarea: / Programa de Capacitación / Entregable: / Coordinación
- 14: Tarea: / Definición de conceptos / Entregable: / Conceptos operativos
- 16: Tarea: / Validación y Aprobación / Entregable: / Liquidaciones
- 17: Tarea: / Validación y Aprobación / Entregable: / Liquidaciones
- 18: Tarea: / Validación y Aprobación / Entregable: / Liquidaciones
- 19: Tarea: / Validación y Aprobación / Entregable: / Liquidaciones
- 20: Tarea: / Validación y Aprobación / Entregable: / Liquidaciones
- 21: Tarea: / Validación y Aprobación / Entregable: / Liquidaciones
- 22: Tarea: / Validación y Aprobación / Entregable: / Liquidaciones

| ID | WBS | Task | Type | Duration | Start | Finish | Predecessors | Total slack | Free slack | Constraint | Resources | Work |
| --- | --- | --- | --- | --- | --- | --- | --- | --- | --- | --- | --- | --- |
| 29 | 1.3 | **Actividades TI SIGER** |  | 92d | 2005-08-25 | 2005-12-30 |  | 0d |  |  | Carlos Lorca Pastén | 3774h |
| 30 | 1.3.1 | Apoyo de TI SIGER a Usuarios Funcionales y TI de la División Ventanas |  | 92d | 2005-08-25 | 2005-12-30 |  | 0d |  | start no earlier than 2005-08-25 | Carlos Lorca Pastén | 736h |
| 31 | 1.3.2 | Entrega de Requerimientos a TI Infraestructura | milestone | 1d | 2005-08-25 | 2005-08-25 |  | 4d | 0d | start no earlier than 2005-08-25 | Carlos Lorca Pastén | 8h |
| 32 | 1.3.3 | Crear Acceso a SIGER Desarrollo vía VPN |  | 11d | 2005-08-25 | 2005-09-08 |  | 81d |  | start no earlier than 2005-08-25 | Carlos Lorca Pastén | 88h |
| 33 | 1.3.4 | Cargar Datos Históricos |  | 40d | 2005-09-16 | 2005-11-10 | 27 | 36d |  | start no earlier than 2005-09-16 | Carlos Lorca Pastén | 320h |
| 34 | 1.3.5 | Cargar Datos Maestros |  | 40d | 2005-09-16 | 2005-11-10 | 27 | 36d |  | finish no earlier than 2005-10-31 | Carlos Lorca Pastén | 320h |
| 35 | 1.3.6 | Revisión Objetos BD Plataforma de Desarrollo |  | 10d | 2005-09-16 | 2005-09-29 | 27 | 66d |  | finish no earlier than 2005-09-09 | Carlos Lorca Pastén | 80h |
| 36 | 1.3.7 | Instalación y Compilación Programas Fuentes en Plataforma de Desarrollo |  | 10d | 2005-09-16 | 2005-09-29 | 27 | 66d |  | start no earlier than 2005-08-29 | Carlos Lorca Pastén | 80h |
| 37 | 1.3.8 | Revisión Objetos BD Plataforma de Produción |  | 5d | 2005-10-18 | 2005-10-24 | 28 | 49d |  | finish no earlier than 2005-10-07 | Carlos Lorca Pastén | 40h |
| 38 | 1.3.9 | Instalación y Compilación Programas Fuentes en Plataforma de Producción |  | 5d | 2005-10-18 | 2005-10-24 | 28 | 49d |  | finish no earlier than 2005-10-07 | Carlos Lorca Pastén | 40h |
| 39 | 1.3.10 | Traspaso de Conceptos desde Desarrollo a Producción |  | 50d | 2005-10-21 | 2005-12-30 | 28 | 0.25d |  | finish no earlier than 2005-12-30 | Carlos Lorca Pastén | 400h |
| 40 | 1.3.11 | **Crear División Ventanas en SIGER** |  | 74.75d | 2005-08-25 | 2005-12-07 |  | 17.25d |  |  | Carlos Lorca Pastén | 774h |
| 41 | 1.3.11.1 | Modificar Programa de Ingreso al sistema |  | 7d | 2005-08-25 | 2005-09-02 |  | 85d |  | start no earlier than 2005-08-25 | Carlos Lorca Pastén | 56h |
| 42 | 1.3.11.2 | Modificar o Crear Programa de Liquidaciones |  | 15d | 2005-11-16 | 2005-12-07 | 22 | 17.25d |  | finish no earlier than 2005-10-21 | Carlos Lorca Pastén | 120h |
| 43 | 1.3.12 | **Interfaces MOADIB - SIGER (Periodo de Transición)** |  | 19d | 2005-09-15 | 2005-10-11 |  | 58d |  |  |  | 152h |
| 44 | 1.3.12.1 | Formato requerido |  | 2d | 2005-09-15 | 2005-09-16 | 7, 8, 5, 9 | 58d | 0d |  | Carlos Lorca Pastén | 16h |
| 45 | 1.3.12.2 | Implementación Interfaces |  | 15d | 2005-09-19 | 2005-10-07 | 44 | 58d | 0d |  | TI-Ventanas | 120h |
| 46 | 1.3.12.3 | Carga de Datos |  | 2d | 2005-10-10 | 2005-10-11 | 45, 27 | 58d |  |  | Carlos Lorca Pastén | 16h |
